Schedule from MS Project, 2007-03-01 to 2007-05-03, 7.5 hours a day.
supcon

## Calendars

- 标准: Mon-Fri 08:30-11:30, 12:30-17:00; Sat-Sun off.

## Resources

| Resource | Group |
| --- | --- |
| 部门经理 | 管理层 |
| 项目经理 | 项目组 |
| 分析人员 | 项目组 |
| 开发人员 | 项目组 |
| 配置管理员 | 项目组 |
| 质量保证员 | 质保组 |
| 测试组 | 测试组 |
| 用户 | 用户组 |
| 最终使用者 | 用户组 |
| 高层管理人员 | 管理层 |
| EPG组 | 管理层 |
| 同行专家 | 同行组 |
| 预研人员 | 项目组 |
| CCB |  |
| 工程人员 |  |
| 销售人员 |  |
| 总师办 |  |
| 工程部 |  |
| 开发部 |  |
| 营销管理部 |  |
| QA |  |

## Schedule

| ID | WBS | Task | Type | Duration | Start | Finish | Predecessors | Total slack | Free slack | Resources | Work |
| --- | --- | --- | --- | --- | --- | --- | --- | --- | --- | --- | --- |
| 1 | 1 | **项目名称** |  | 45.57d? | 2007-03-01 | 2007-05-03 |  | 0d |  |  | 1401.5h |
| 2 | 1.1 | **立项评估** |  | 10.23d? | 2007-03-01 | 2007-03-15 |  | 13.86d |  |  | 26h |
| 3 | 1.1.1 | 编制项目立项评估PPT |  | 2d? | 2007-03-01 | 2007-03-02 |  | 13.86d | 0d | 部门经理; 项目经理 | 15h |
| 4 | 1.1.2 | 组织项目立项评估 |  | 1d? | 2007-03-05 | 2007-03-05 | 3 | 41.57d | 0d |  |  |
| 5 | 1.1.3 | 编写项目任务书 |  | 1d? | 2007-03-06 | 2007-03-06 | 4 | 41.57d |  |  |  |
| 6 | 1.1.4 | 制定PDP |  | 12h? | 2007-03-05 | 2007-03-07 | 3 | 35.33d | 0d | 项目经理; 质量保证员 [50%] | 9h |
| 7 | 1.1.5 | PDP评审 |  | 3h? | 2007-03-07 | 2007-03-15 | 6 | 35.33d |  | 项目经理; EPG组 [50%] | 2h |
| 8 | 1.2 | **技术预研** |  | 13d? | 2007-03-01 | 2007-03-19 |  | 32.57d |  |  | 60h |
| 9 | 1.2.1 | 技术预研 |  | 2.87d? | 2007-03-01 | 2007-03-05 |  | 32.57d | 0d | 项目经理; 预研人员 | 22.5h |
| 10 | 1.2.2 | 编制预研方案 |  | 3d? | 2007-03-06 | 2007-03-14 | 9 | 32.57d | 0d | 项目经理; 预研人员 | 22.5h |
| 11 | 1.2.3 | 启动决策分析【条件驱动】 |  | 2d? | 2007-03-14 | 2007-03-19 | 10 | 32.57d |  | 项目经理; 同行专家 | 15h |
| 12 | 1.3 | **人员培训** |  | 9.09d? | 2007-03-08 | 2007-03-21 | 3 | 31.48d |  |  | 37.5h |
| 13 | 1.3.1 | 阶段1 |  | 2d? | 2007-03-08 | 2007-03-16 |  | 32.48d | 1d | 项目经理; 开发人员 | 15h |
| 14 | 1.3.2 | 阶段2 |  | 2d? | 2007-03-09 | 2007-03-19 |  | 31.48d | 0d | 项目经理; 开发人员 | 15h |
| 15 | 1.3.3 | 培训总结 |  | 1d? | 2007-03-19 | 2007-03-21 | 13, 14 | 31.48d |  | 开发人员 | 7.5h |
| 16 | 1.4 | **需求开发** |  | 15.86d? | 2007-03-01 | 2007-03-22 |  | 0d |  |  | 105h |
| 17 | 1.4.1 | 需求调研 |  | 1d? | 2007-03-01 | 2007-03-01 |  | 0d |  | 分析人员 | 7.5h |
| 18 | 1.4.2 | 需求定义 |  | 1d? | 2007-03-09 | 2007-03-09 | 17 | 0d |  | 分析人员 | 7.5h |
| 19 | 1.4.3 | 编写需求规格说明书 |  | 1d? | 2007-03-14 | 2007-03-15 | 17, 18 | 1.73d |  | 分析人员 | 7.5h |
| 20 | 1.4.4 | 制定验收标准 |  | 1.55d? | 2007-03-12 | 2007-03-19 | 17, 18 | 0d |  | 分析人员; 项目经理; 用户; 最终使用者 | 22.5h |
| 21 | 1.4.5 | 需求规格说明书、需求跟踪矩阵及验收标准评审 |  | 1.57d? | 2007-03-19 | 2007-03-20 | 19, 20 | 0d |  | 分析人员; 项目经理; 开发人员; 测试组; 用户; 最终使用者; 同行专家 | 45h |
| 22 | 1.4.6 | 需求规格说明书等返工及确认 |  | 1d? | 2007-03-21 | 2007-03-22 | 21 | 0d |  | 分析人员; 项目经理 | 7.5h |
| 23 | 1.4.7 | 配置管理：建立和审计需求基线 |  | 0.5d? | 2007-03-22 | 2007-03-22 | 22 | 0d |  | CCB; 配置管理员 | 7.5h |
| 24 | 1.5 | 需求里程碑 | milestone | 1.5d? | 2007-03-22 | 2007-03-29 | 21, 16 | 24.88d |  | 项目经理; 高层管理人员; 质量保证员; 部门经理 | 22.5h |

Notes:
- 1: 各任务的关联限制和先后顺序根据项目制定； / 任务的数量根据项目进行裁减和增加； / 关键控制点根据项目设定； / 资源根据项目作调整； / 关键路径根据项目选择。 / 各任务的历时无参考价值。

| ID | WBS | Task | Type | Duration | Start | Finish | Predecessors | Total slack | Free slack | Resources | Work |
| --- | --- | --- | --- | --- | --- | --- | --- | --- | --- | --- | --- |
| 25 | 1.6 | **项目计划** |  | 25.67d? | 2007-03-22 | 2007-04-27 |  | 0d |  |  | 150h |
| 26 | 1.6.1 | 项目估算 |  | 1.5d? | 2007-03-22 | 2007-03-26 | 3, 23 | 0d |  | 项目经理; 分析人员; 开发人员; 同行专家 | 22.5h |
| 27 | 1.6.2 | 制定项目计划及其子计划 |  | 1d? | 2007-04-13 | 2007-04-16 | 26 | 0d |  | 项目经理 | 7.5h |
| 28 | 1.6.3 | 制定质量保证计划 |  | 1d? | 2007-04-16 | 2007-04-17 | 27 | 0.1d |  | 质量保证员 | 7.5h |
| 29 | 1.6.4 | 制定配置管理计划 |  | 1d? | 2007-04-16 | 2007-04-17 | 27 | 0.1d |  | 配置管理员 | 7.5h |
| 30 | 1.6.5 | 制定测试计划 |  | 1d? | 2007-04-16 | 2007-04-17 | 27 | 0d |  | 测试组 | 7.5h |
| 31 | 1.6.6 | 项目计划评审 |  | 2.65d? | 2007-04-17 | 2007-04-20 | 26, 27, 28, 29, 30 | 0d |  | 项目经理; 分析人员; 开发人员; 配置管理员; 质量保证员; 测试组; 部门经理 | 52.5h |
| 32 | 1.6.7 | 项目计划返工及确认 |  | 2.4d? | 2007-04-20 | 2007-04-25 | 31 | 0d |  | 项目经理; 配置管理员; 质量保证员; 测试组 | 30h |
| 33 | 1.6.8 | 配置管理：建立和审计计划基线 |  | 1.59d? | 2007-04-25 | 2007-04-27 | 32 | 0d |  | CCB; 配置管理员 | 15h |
| 34 | 1.7 | 计划里程碑 | milestone | 1.38d? | 2007-04-27 | 2007-05-03 | 32, 25 | 0d |  | 项目经理; 质量保证员; 高层管理人员; 部门经理 | 22.5h |
| 35 | 1.8 | **项目设计** |  | 3d? | 2007-03-01 | 2007-03-05 |  | 17.62d | 9d |  | 37.5h |
| 36 | 1.8.1 | **概要设计** |  | 3d? | 2007-03-01 | 2007-03-05 |  | 17.62d |  |  | 22.5h |
| 37 | 1.8.1.1 | 功能描述与总体设计 |  | 1d? | 2007-03-01 | 2007-03-01 |  | 19.62d |  |  |  |
| 38 | 1.8.1.2 | 业务流程 |  | 1d? | 2007-03-01 | 2007-03-01 |  | 19.62d |  |  |  |
| 39 | 1.8.1.3 | 数据库设计 |  | 1d? | 2007-03-01 | 2007-03-01 |  | 19.62d |  |  |  |
| 40 | 1.8.1.4 | 接口定义 |  | 1d? | 2007-03-05 | 2007-03-05 |  | 17.62d | 0d | 分析人员 | 7.5h |
| 41 | 1.8.1.5 | 界面原型设计 |  | 2d? | 2007-03-01 | 2007-03-02 |  | 18.62d |  | 分析人员; 开发人员 | 15h |
| 42 | 1.8.1.6 | 容错设计 |  | 1d? | 2007-03-01 | 2007-03-01 |  | 19.62d |  |  |  |
| 43 | 1.8.2 | 概要设计评审与修改 |  | 1d? | 2007-03-01 | 2007-03-01 |  | 19.62d |  |  |  |
| 44 | 1.8.3 | **详细设计** |  | 1d? | 2007-03-01 | 2007-03-01 |  | 19.62d |  |  |  |
| 45 | 1.8.3.1 | 类图、方法定义 |  | 1d? | 2007-03-01 | 2007-03-01 |  | 19.62d |  |  |  |
| 46 | 1.8.3.2 | 接口定义 |  | 1d? | 2007-03-01 | 2007-03-01 |  | 19.62d |  |  |  |
| 47 | 1.8.3.3 | 容错设计 |  | 1d? | 2007-03-01 | 2007-03-01 |  | 19.62d |  |  |  |
| 48 | 1.8.4 | 详细设计评审与修改 |  | 1d? | 2007-03-01 | 2007-03-01 |  | 19.62d |  |  |  |
| 49 | 1.8.5 | 配置管理：建立和审计设计基线 |  | 1d? | 2007-03-01 | 2007-03-01 |  | 19.62d |  | CCB; 配置管理员 | 15h |

| ID | WBS | Task | Type | Duration | Start | Finish | Predecessors | Total slack | Free slack | Constraint | Resources | Work |
| --- | --- | --- | --- | --- | --- | --- | --- | --- | --- | --- | --- | --- |
| 50 | 1.9 | **修复项目计划** |  | 12d? | 2007-03-01 | 2007-03-16 |  | 28.98d | 0d |  |  | 82.5h |
| 51 | 1.9.1 | 更新项目估算及项目计划 |  | 2.47d? | 2007-03-01 | 2007-03-05 |  | 36.51d | 7.73d |  | 项目经理; 配置管理员; 质量保证员; 测试组; 同行专家 | 37.5h |
| 52 | 1.9.2 | 制定产品集成计划 |  | 3d? | 2007-03-06 | 2007-03-15 | 40 | 28.78d | 0d |  | 分析人员; 项目经理; 测试组 | 22.5h |
| 53 | 1.9.3 | 产品集成计划及修订计划评审与修复 |  | 0.43d? | 2007-03-15 | 2007-03-15 | 51, 52 | 28.78d | 0.16d |  | 分析人员; 项目经理; 开发人员; 配置管理员; 质量保证员; 测试组; 部门经理 | 7.5h |
| 54 | 1.9.4 | 配置管理：修改和审计计划基线内容 |  | 1d? | 2007-03-16 | 2007-03-16 | 53 | 28.98d |  |  | CCB; 配置管理员 | 15h |
| 55 | 1.10 | 设计里程碑 | milestone | 1.5d? | 2007-03-19 | 2007-03-23 | 50, 35 | 28.98d |  |  | 项目经理; 高层管理人员; 质量保证员; 部门经理 | 22.5h |
| 56 | 1.11 | **产品开发** |  | 21.84d? | 2007-03-22 | 2007-04-23 |  | 3.37d | 0d |  |  | 300h |
| 57 | 1.11.1 | **代码编写** |  | 8.68d? | 2007-03-22 | 2007-04-04 | 16, 35 | 3.37d | 0d |  |  | 30h |
| 58 | 1.11.1.1 | **模块1** |  | 7.28d? | 2007-03-22 | 2007-04-03 |  | 4.77d | 0d |  |  | 15h |
| 59 | 1.11.1.1.1 | 任务1及单元测试 |  | 1d? | 2007-03-22 | 2007-03-23 |  | 9.4d | 0d |  | 开发人员 | 7.5h |
| 60 | 1.11.1.1.2 | 任务2及单元测试 |  | 1d? | 2007-03-29 | 2007-04-03 | 59 | 9.4d |  |  | 开发人员 | 7.5h |
| 61 | 1.11.1.2 | **模块2** |  | 4.6d? | 2007-03-28 | 2007-04-04 |  | 3.37d | 0d |  |  | 15h |
| 62 | 1.11.1.2.1 | 任务1及单元测试 |  | 1d? | 2007-03-28 | 2007-03-29 |  | 8d | 0d |  | 开发人员 | 7.5h |
| 63 | 1.11.1.2.2 | 任务2及单元测试 |  | 1d? | 2007-03-29 | 2007-04-04 | 62 | 8d |  |  | 开发人员 | 7.5h |
| 64 | 1.11.2 | **文档编写** |  | 14.58d? | 2007-03-22 | 2007-04-12 | 16, 35 | 10.63d |  |  |  | 97.5h |
| 65 | 1.11.2.1 | 编写用户手册 |  | 0.67d? | 2007-03-22 | 2007-03-28 |  | 10.63d | 0d |  | 分析人员; 开发人员; 项目经理 | 7.5h |
| 66 | 1.11.2.2 | 编写工程师手册 |  | 1.96d? | 2007-03-22 | 2007-03-27 |  | 11.96d | 1.33d |  | 分析人员; 开发人员; 项目经理 | 22.5h |
| 67 | 1.11.2.3 | 编写安装手册 |  | 2d? | 2007-03-22 | 2007-03-28 |  | 10.96d | 0.33d |  | 分析人员; 开发人员; 项目经理 | 22.5h |
| 68 | 1.11.2.4 | 文档及需求跟踪矩阵评审 |  | 1.8d? | 2007-03-28 | 2007-04-04 | 65, 66, 67 | 10.63d | 0d |  | 分析人员; 开发人员; 项目经理; 测试组; 同行专家 | 22.5h |
| 69 | 1.11.2.5 | 文档等返工及确认 |  | 2.6d? | 2007-04-04 | 2007-04-12 | 68 | 10.63d |  |  | 分析人员; 开发人员; 项目经理 | 22.5h |
| 70 | 1.11.3 | **代码同行评审** |  | 2.4d | 2007-04-03 | 2007-04-05 |  | 10.67d |  |  |  | 45h |
| 71 | 1.11.3.1 | 代码同行评审 （模块/任务）1 |  | 1d | 2007-04-03 | 2007-04-04 | 58 | 13.07d | 7.3d | start no earlier than 2007-03-05 | 开发人员; 项目经理; 同行专家 | 22.5h |
| 72 | 1.11.3.2 | 代码同行评审 （模块/任务）2 |  | 1d | 2007-04-04 | 2007-04-05 | 61 | 9.27d | 5.9d | start no earlier than 2007-03-12 | 开发人员; 项目经理; 同行专家 | 22.5h |
| 73 | 1.11.4 | **产品集成及内部测试** |  | 8.9d? | 2007-04-02 | 2007-04-13 |  | 3.37d | 0d |  |  | 52.5h |
| 74 | 1.11.4.1 | 产品集成 |  | 3.33d? | 2007-04-02 | 2007-04-10 | 57FS-2d | 3.37d | 0d |  | 分析人员; 开发人员; 项目经理; 配置管理员 | 30h |
| 75 | 1.11.4.2 | 内部测试及返工 |  | 2.44d? | 2007-04-10 | 2007-04-13 | 74 | 3.37d |  |  | 分析人员; 开发人员; 项目经理 | 22.5h |

| ID | WBS | Task | Type | Duration | Start | Finish | Predecessors | Total slack | Free slack | Resources | Work |
| --- | --- | --- | --- | --- | --- | --- | --- | --- | --- | --- | --- |
| 76 | 1.11.5 | **（与用户）阶段性交流** |  | 5.26d? | 2007-04-13 | 2007-04-20 | 73 | 3.37d |  |  | 60h |
| 77 | 1.11.5.1 | 模块1 |  | 2.36d? | 2007-04-13 | 2007-04-18 | 58, 71 | 5.77d |  | 开发人员; 项目经理; 测试组; 用户 | 30h |
| 78 | 1.11.5.2 | 模块2 |  | 2.36d? | 2007-04-13 | 2007-04-20 | 61, 72 | 3.37d |  | 开发人员; 项目经理; 测试组; 用户 | 30h |
| 79 | 1.11.6 | 配置管理：建立和审计编码基线 |  | 1d? | 2007-04-20 | 2007-04-23 | 76 | 3.37d |  | CCB; 配置管理员 | 15h |
| 80 | 1.12 | 编码里程碑 | milestone | 2.15d? | 2007-04-23 | 2007-04-30 | 56 | 3.37d |  | 项目经理; 高层管理人员; 质量保证员; 部门经理 | 22.5h |
| 81 | 1.13 | **产品验证（包括软件和文档验证）** |  | 34.54d? | 2007-03-01 | 2007-04-18 |  | 8d | 0d |  | 120h |
| 82 | 1.13.1 | 制作安装盘 |  | 1d? | 2007-03-01 | 2007-03-01 |  | 37.89d | 0d | 项目经理; 配置管理员 | 15h |
| 83 | 1.13.2 | 安装卸载测试 |  | 1d? | 2007-03-02 | 2007-03-02 | 82 | 37.89d | 0d | 测试组 | 7.5h |
| 84 | 1.13.3 | （安装卸载测试）产品返工 |  | 1.35d? | 2007-03-05 | 2007-03-07 | 83 | 37.89d | 31.56d | 开发人员; 项目经理; 分析人员 | 22.5h |
| 85 | 1.13.4 | 集成测试 |  | 1d? | 2007-04-10 | 2007-04-11 | 74 | 8d | 0d | 测试组 | 7.5h |
| 86 | 1.13.5 | （集成测试）产品返工 |  | 1.54d? | 2007-04-11 | 2007-04-13 | 85 | 8d | 0d | 开发人员; 项目经理; 分析人员 | 22.5h |
| 87 | 1.13.6 | 系统测试 |  | 1d? | 2007-04-13 | 2007-04-16 | 86 | 8d | 0d | 测试组 | 7.5h |
| 88 | 1.13.7 | （系统测试）产品返工 |  | 1d? | 2007-04-16 | 2007-04-17 | 87 | 8d | 0d | 开发人员; 项目经理; 分析人员 | 22.5h |
| 89 | 1.13.8 | 配置管理：建立和审计测试基线 |  | 1d? | 2007-04-17 | 2007-04-18 | 88 | 8d |  | CCB; 配置管理员 | 15h |
| 90 | 1.14 | 测试里程碑 | milestone | 0.75d? | 2007-04-18 | 2007-04-19 | 81 | 10.28d |  | 项目经理; 高层管理人员; 质量保证员; 部门经理 | 22.5h |
| 91 | 1.15 | **产品内部验收** |  | 1d? | 2007-03-01 | 2007-03-01 |  | 44.57d |  | 项目经理; 高层管理人员; 质量保证员; 部门经理; 工程人员; 用户; 销售人员 | 97.5h |
| 92 | 1.15.1 | 内部验收准备 |  | 1d? | 2007-03-01 | 2007-03-01 |  | 44.57d |  | 项目经理; QA | 15h |
| 93 | 1.15.2 | 内部验收会 |  | 1d? | 2007-03-01 | 2007-03-01 |  | 44.57d |  | 项目经理; 工程人员; 总师办; 用户 | 30h |
| 94 | 1.16 | **配置项变更【条件驱动】** |  | 8.2d? | 2007-03-01 | 2007-03-13 |  | 34.34d | 26.34d |  | 52.5h |
| 95 | 1.16.1 | 配置项变更申请 |  | 2d? | 2007-03-01 | 2007-03-02 |  | 35d | 0d | 开发人员; 项目经理; CCB | 22.5h |
| 96 | 1.16.2 | 执行变更 |  | 2d? | 2007-03-06 | 2007-03-09 | 95 | 34.34d | 0d | 开发人员; 项目经理 | 15h |
| 97 | 1.16.3 | 变更内容评审 |  | 1d? | 2007-03-09 | 2007-03-12 | 96 | 34.34d | 0d | CCB | 7.5h |
| 98 | 1.16.4 | 配置项/配置基线重新标识和审计 |  | 1d? | 2007-03-12 | 2007-03-13 | 97 | 34.34d |  | 配置管理员 | 7.5h |
| 99 | 1.17 | **项目结项** |  | 37.27d? | 2007-03-01 | 2007-04-23 |  | 8.3d |  |  | 145.5h |
| 100 | 1.17.1 | 结项资料准备 |  | 1d? | 2007-04-18 | 2007-04-19 | 81, 94 | 8d | 0d | 项目经理; 开发人员 | 15h |
| 101 | 1.17.2 | 最佳实践入库（PAL） |  | 1d? | 2007-04-19 | 2007-04-20 | 100 | 9.03d |  | 项目经理; 开发人员; 分析人员; 测试组; 配置管理员; 质量保证员 | 45h |
| 102 | 1.17.3 | 项目总结会议 | milestone | 2h? | 2007-04-23 | 2007-04-23 | 100 | 8.3d |  | 项目经理; 部门经理; 高层管理人员; 开发人员; 分析人员; 配置管理员; 质量保证员; 测试组; 用户 | 18h |
| 103 | 1.17.4 | 项目结题发布 |  | 1d? | 2007-03-01 | 2007-03-01 |  | 44.57d |  | 项目经理; 部门经理; 高层管理人员; 开发人员; 分析人员; 配置管理员; 质量保证员; 测试组; 用户 | 67.5h |

| ID | WBS | Task | Duration | Start | Finish | Predecessors | Total slack | Free slack | Resources | Work |
| --- | --- | --- | --- | --- | --- | --- | --- | --- | --- | --- |
| 104 | 1.18 | **产品试用** | 1d? | 2007-03-01 | 2007-03-01 |  | 44.57d |  |  | 22.5h |
| 105 | 1.18.1 | 安排试用，下达试用任务书 | 1d? | 2007-03-01 | 2007-03-01 |  | 44.57d |  | 总师办 | 7.5h |
| 106 | 1.18.2 | 工程部门负责试用，提交试用报告 | 1d? | 2007-03-01 | 2007-03-01 |  | 44.57d |  | 工程部 | 7.5h |
| 107 | 1.18.3 | 配合缺陷修改 | 1d? | 2007-03-01 | 2007-03-01 |  | 44.57d |  | 开发部 | 7.5h |
| 108 | 1.19 | **产品发布** | 2.33d? | 2007-04-18 | 2007-04-20 |  | 8.69d |  |  | 52.5h |
| 109 | 1.19.1 | 准备发布文档 | 0.67d? | 2007-04-18 | 2007-04-19 | 81 | 8.69d | 0d | 总师办; 开发部; 营销管理部 | 15h |
| 110 | 1.19.2 | 内部宣讲会 | 1d? | 2007-04-19 | 2007-04-20 | 109 | 8.69d | 0d | 总师办; 开发部; 营销管理部 | 22.5h |
| 111 | 1.19.3 | 产品发布审批（及释放） | 0.67d? | 2007-04-20 | 2007-04-20 | 94, 84, 110 | 8.69d |  | 项目经理; 配置管理员; 开发人员 | 15h |
